# Agile Project Management

How a schedule from MS Project changed from version to version. A marks actual dates.

## Version 1 (saved 2025-12-18)

Note of the change: Add projekt.mpp

| ID | WBS | Task | Duration | Start | Finish |
| --- | --- | --- | --- | --- | --- |
| 1 | 1 | **Sprint 1** | 2w | 2025-09-29 | 2025-10-10 |
| 2 | 1.1 | **Analiza wymagań i dokumentacja** | 10d | 2025-09-29 | 2025-10-10 |
| 3 |  | Analiza wymagań biznesowych | 1d? | 2025-09-29 | 2025-09-29 |
| 4 |  | Spisanie dokumentacji projektu | 1d? | 2025-09-29 | 2025-09-29 |
| 5 | 1.2 | **Projekt interfejsu (UI)** | 10d | 2025-09-29 | 2025-10-10 |
| 6 |  | Projekt makiety strony głównej | 1d? | 2025-09-29 | 2025-09-29 |
| 7 |  | Projekt formularzy | 1d? | 2025-09-29 | 2025-09-29 |
| 8 |  | Dobór stylów CSS i fontów | 1d? | 2025-09-29 | 2025-09-29 |
| 9 | 1.3 | **Rejestracja i logowanie** | 10d | 2025-09-29 | 2025-10-10 |
| 10 |  | Utworzenie tabeli 'Users' w DB | 1d? | 2025-09-29 | 2025-09-29 |
| 11 |  | API Backend: Logowanie | 1d? | 2025-09-29 | 2025-09-29 |
| 12 |  | Frontend: Formularz HTML/JS | 1d? | 2025-09-29 | 2025-09-29 |
| 13 | 2 | **Sprint 2** | 2w | 2025-10-13 | 2025-10-24 |
| 14 | 2.1 | **Katalog produktów (Backend + Lista)** | 10d | 2025-10-13 | 2025-10-24 |
| 15 |  | Backend: Endpoint GET /products | 1d? | 2025-10-13 | 2025-10-13 |
| 16 |  | Frontend: Widok listy (HTML/CSS) | 1d? | 2025-10-13 | 2025-10-13 |
| 17 |  | Frontend: Pobieranie danych (JS) | 1d? | 2025-10-13 | 2025-10-13 |
| 18 | 2.2 | **Filtrowanie produktów** | 10d | 2025-10-13 | 2025-10-24 |
| 19 |  | Backend: Zapytania SQL (WHERE) | 1d? | 2025-10-13 | 2025-10-13 |
| 20 |  | Frontend: Pasek boczny filtrów | 1d? | 2025-10-13 | 2025-10-13 |
| 21 | 2.3 | **Koszyk zakupowy** | 10d | 2025-10-13 | 2025-10-24 |
| 22 |  | Backend: Sesja koszyka (Logic) | 1d? | 2025-10-13 | 2025-10-13 |
| 23 |  | Frontend: Przycisk Dodaj (JS) | 1d? | 2025-10-13 | 2025-10-13 |
| 24 |  | Frontend: Widok koszyka (Table) | 1d? | 2025-10-13 | 2025-10-13 |
| 25 | 3 | **Sprint 3** | 10d | 2025-10-27 | 2025-11-07 |
| 26 | 3.1 | **Proces składania zamówienia** | 10d | 2025-10-27 | 2025-11-07 |
| 27 |  | Backend: API zapisu zamówienia | 1d? | 2025-10-27 | 2025-10-27 |
| 28 |  | Frontend: Formularz dostawy | 1d? | 2025-10-27 | 2025-10-27 |
| 29 |  | DB: Tabela Orders i relacje | 1d? | 2025-10-27 | 2025-10-27 |
| 30 | 3.2 | **Bramka płatności (Integracja)** | 10d | 2025-10-27 | 2025-11-07 |
| 31 |  | Integracja API (klucze, connect) | 1d? | 2025-10-27 | 2025-10-27 |
| 32 |  | Obsługa statusów płatności (UI) | 1d? | 2025-10-27 | 2025-10-27 |
| 33 | 3.3 | **Panel administracyjny** | 10d | 2025-10-27 | 2025-11-07 |
| 34 |  | Layout panelu i Dashboard | 1d? | 2025-10-27 | 2025-10-27 |
| 35 |  | Backend: Edycja produktów | 1d? | 2025-10-27 | 2025-10-27 |
| 36 |  | Frontend: Lista zamówień (View) | 1d? | 2025-10-27 | 2025-10-27 |
| 37 | 4 | **Sprint 4** | 10d | 2025-11-10 | 2025-11-21 |
| 38 | 4.1 | **Testy funkcjonalne i integracyjne** | 10d | 2025-11-10 | 2025-11-21 |
| 39 |  | Scenariusze testowe (Docs) | 1d? | 2025-11-10 | 2025-11-10 |
| 40 |  | Testy manualne interfejsu (UI) | 1d? | 2025-11-10 | 2025-11-10 |
| 41 |  | Testy integracyjne API (Auto) | 1d? | 2025-11-10 | 2025-11-10 |
| 42 | 4.2 | **Optymalizacja wydajności** | 10d | 2025-11-10 | 2025-11-21 |
| 43 |  | Minifikacja kodu JS/CSS | 1d? | 2025-11-10 | 2025-11-10 |
| 44 |  | Optymalizacja zapytań SQL | 1d? | 2025-11-10 | 2025-11-10 |
| 45 |  | Audyt wydajności (Lighthouse) | 1d? | 2025-11-10 | 2025-11-10 |
| 46 | 4.3 | **Demo i dokumentacja końcowa** | 10d | 2025-11-10 | 2025-11-21 |
| 47 |  | Przygotowanie prezentacji Demo | 1d? | 2025-11-10 | 2025-11-10 |
| 48 |  | Kompletowanie dok. technicznej | 1d? | 2025-11-10 | 2025-11-10 |

## Version 2 (saved 2025-12-27)

Note of the change: Update projekt.mpp

Last finish stays 2025-11-21. Complete tasks 0 → 32.

Changed:

| ID | Task | Start | Finish | Duration | Complete | Other |
| --- | --- | --- | --- | --- | --- | --- |
| 1 | **Sprint 1** |  | 2025-10-10 A |  | 0% → 100% | baseline start none → 2025-09-29; baseline finish none → 2025-10-10 |
| 2 | **Analiza wymagań i dokumentacja** |  |  |  | 0% → 100% | baseline start none → 2025-09-29; baseline finish none → 2025-10-10 |
| 3 | Analiza wymagań biznesowych | 2025-09-29 → 2025-09-30 A (+1d) | 2025-09-29 → 2025-10-01 A (+2d) | 1d? → 1.12d | 0% → 100% | resources none → Makise; baseline start none → 2025-09-29; baseline finish none → 2025-09-29 |
| 4 | Spisanie dokumentacji projektu | 2025-09-29 → 2025-10-01 A (+2d) | 2025-09-29 → 2025-10-01 A (+2d) | 1d? → 1d | 0% → 100% | resources none → Makise; baseline start none → 2025-09-29; baseline finish none → 2025-09-29 |
| 5 | **Projekt interfejsu (UI)** |  |  |  | 0% → 100% | baseline start none → 2025-09-29; baseline finish none → 2025-10-10 |
| 6 | Projekt makiety strony głównej | 2025-09-29 → 2025-09-30 A (+1d) | 2025-09-29 → 2025-10-02 A (+3d) | 1d? → 2.25d | 0% → 100% | resources none → Lucjusz; baseline start none → 2025-09-29; baseline finish none → 2025-09-29 |
| 7 | Projekt formularzy | 2025-09-29 → 2025-10-01 A (+2d) | 2025-09-29 → 2025-10-06 A (+7d) | 1d? → 3.12d | 0% → 100% | resources none → Lucjusz; baseline start none → 2025-09-29; baseline finish none → 2025-09-29 |
| 8 | Dobór stylów CSS i fontów | 2025-09-29 → 2025-10-02 A (+3d) | 2025-09-29 → 2025-10-06 A (+7d) | 1d? → 2.25d | 0% → 100% | resources none → Lucjusz; baseline start none → 2025-09-29; baseline finish none → 2025-09-29 |
| 9 | **Rejestracja i logowanie** |  | 2025-10-10 A |  | 0% → 100% | baseline start none → 2025-09-29; baseline finish none → 2025-10-10 |
| 10 | Utworzenie tabeli 'Users' w DB | 2025-09-29 → 2025-10-01 A (+2d) | 2025-09-29 → 2025-10-03 A (+4d) | 1d? → 2.12d | 0% → 100% | resources none → Amush; baseline start none → 2025-09-29; baseline finish none → 2025-09-29 |
| 11 | API Backend: Logowanie | 2025-09-29 → 2025-10-03 A (+4d) | 2025-09-29 → 2025-10-08 A (+9d) | 1d? → 2.12d | 0% → 100% | resources none → Amush; baseline start none → 2025-09-29; baseline finish none → 2025-09-29 |
| 12 | Frontend: Formularz HTML/JS | 2025-09-29 → 2025-10-06 A (+7d) | 2025-09-29 → 2025-10-10 A (+11d) | 1d? → 2.12d | 0% → 100% | resources none → Lucjusz; baseline start none → 2025-09-29; baseline finish none → 2025-09-29 |
| 13 | **Sprint 2** |  |  |  | 0% → 100% | baseline start none → 2025-10-13; baseline finish none → 2025-10-24 |
| 14 | **Katalog produktów (Backend + Lista)** |  |  |  | 0% → 100% | baseline start none → 2025-10-13; baseline finish none → 2025-10-24 |
| 15 | Backend: Endpoint GET /products | 2025-10-13 → 2025-10-14 A (+1d) | 2025-10-13 → 2025-10-16 A (+3d) | 1d? → 2.12d | 0% → 100% | resources none → Amush; baseline start none → 2025-10-13; baseline finish none → 2025-10-13 |
| 16 | Frontend: Widok listy (HTML/CSS) | 2025-10-13 → 2025-10-14 A (+1d) | 2025-10-13 → 2025-10-16 A (+3d) | 1d? → 2.12d | 0% → 100% | resources none → Lucjusz; baseline start none → 2025-10-13; baseline finish none → 2025-10-13 |
| 17 | Frontend: Pobieranie danych (JS) | 2025-10-13 → 2025-10-16 A (+3d) | 2025-10-13 → 2025-10-17 A (+4d) | 1d? → 1.12d | 0% → 100% | resources none → Lucjusz; baseline start none → 2025-10-13; baseline finish none → 2025-10-13 |
| 18 | **Filtrowanie produktów** |  |  |  | 0% → 100% | baseline start none → 2025-10-13; baseline finish none → 2025-10-24 |
| 19 | Backend: Zapytania SQL (WHERE) | 2025-10-13 → 2025-10-14 A (+1d) | 2025-10-13 → 2025-10-15 A (+2d) | 1d? → 1.12d | 0% → 100% | resources none → Makise; baseline start none → 2025-10-13; baseline finish none → 2025-10-13 |
| 20 | Frontend: Pasek boczny filtrów | 2025-10-13 → 2025-10-14 A (+1d) | 2025-10-13 → 2025-10-15 A (+2d) | 1d? → 1.25d | 0% → 100% | resources none → Lucjusz; baseline start none → 2025-10-13; baseline finish none → 2025-10-13 |
| 21 | **Koszyk zakupowy** |  |  |  | 0% → 100% | baseline start none → 2025-10-13; baseline finish none → 2025-10-24 |
| 22 | Backend: Sesja koszyka (Logic) | 2025-10-13 → 2025-10-14 A (+1d) | 2025-10-13 → 2025-10-17 A (+4d) | 1d? → 3.12d | 0% → 100% | resources none → Amush; baseline start none → 2025-10-13; baseline finish none → 2025-10-13 |
| 23 | Frontend: Przycisk Dodaj (JS) | 2025-10-13 → 2025-10-17 A (+4d) | 2025-10-13 → 2025-10-21 A (+8d) | 1d? → 2.12d | 0% → 100% | resources none → Lucjusz; baseline start none → 2025-10-13; baseline finish none → 2025-10-13 |
| 24 | Frontend: Widok koszyka (Table) | 2025-10-13 → 2025-10-21 A (+8d) | 2025-10-13 → 2025-10-22 A (+9d) | 1d? → 1.5d | 0% → 100% | resources none → Lucjusz; baseline start none → 2025-10-13; baseline finish none → 2025-10-13 |
| 25 | **Sprint 3** |  |  |  | 0% → 100% | baseline start none → 2025-10-27; baseline finish none → 2025-11-07 |
| 26 | **Proces składania zamówienia** |  |  |  | 0% → 100% | baseline start none → 2025-10-27; baseline finish none → 2025-11-07 |
| 27 | Backend: API zapisu zamówienia | 2025-10-27 → 2025-10-28 A (+1d) | 2025-10-27 → 2025-10-31 A (+4d) | 1d? → 3.12d | 0% → 100% | resources none → Amush; baseline start none → 2025-10-27; baseline finish none → 2025-10-27 |
| 28 | Frontend: Formularz dostawy | 2025-10-27 → 2025-10-28 A (+1d) | 2025-10-27 → 2025-10-30 A (+3d) | 1d? → 2.12d | 0% → 100% | resources none → Lucjusz; baseline start none → 2025-10-27; baseline finish none → 2025-10-27 |
| 29 | DB: Tabela Orders i relacje | 2025-10-27 → 2025-10-28 A (+1d) | 2025-10-27 → 2025-10-30 A (+3d) | 1d? → 2.12d | 0% → 100% | resources none → Makise; baseline start none → 2025-10-27; baseline finish none → 2025-10-27 |
| 30 | **Bramka płatności (Integracja)** |  |  |  | 0% → 100% | baseline start none → 2025-10-27; baseline finish none → 2025-11-07 |
| 31 | Integracja API (klucze, connect) | 2025-10-27 → 2025-10-28 A (+1d) | 2025-10-27 → 2025-10-31 A (+4d) | 1d? → 3.12d | 0% → 100% | resources none → Amush; baseline start none → 2025-10-27; baseline finish none → 2025-10-27 |
| 32 | Obsługa statusów płatności (UI) | 2025-10-27 → 2025-10-28 A (+1d) | 2025-10-27 → 2025-10-31 A (+4d) | 1d? → 3.12d | 0% → 100% | resources none → Lucjusz; baseline start none → 2025-10-27; baseline finish none → 2025-10-27 |
| 33 | **Panel administracyjny** |  |  |  | 0% → 100% | baseline start none → 2025-10-27; baseline finish none → 2025-11-07 |
| 34 | Layout panelu i Dashboard | 2025-10-27 → 2025-10-28 A (+1d) | 2025-10-27 → 2025-11-04 A (+8d) | 1d? → 4.12d | 0% → 100% | resources none → Lucjusz; baseline start none → 2025-10-27; baseline finish none → 2025-10-27 |
| 35 | Backend: Edycja produktów | 2025-10-27 → 2025-10-28 A (+1d) | 2025-10-27 → 2025-11-04 A (+8d) | 1d? → 4.25d | 0% → 100% | resources none → Amush; baseline start none → 2025-10-27; baseline finish none → 2025-10-27 |
| 36 | Frontend: Lista zamówień (View) | 2025-10-27 → 2025-10-28 A (+1d) | 2025-10-27 → 2025-11-04 A (+8d) | 1d? → 3.12d | 0% → 100% | resources none → Lucjusz; baseline start none → 2025-10-27; baseline finish none → 2025-10-27 |
| 37 | **Sprint 4** |  |  |  | 0% → 100% | baseline start none → 2025-11-10; baseline finish none → 2025-11-21 |
| 38 | **Testy funkcjonalne i integracyjne** |  |  |  | 0% → 100% | baseline start none → 2025-11-10; baseline finish none → 2025-11-21 |
| 39 | Scenariusze testowe (Docs) | 2025-11-10 → 2025-11-11 A (+1d) | 2025-11-10 → 2025-11-11 A (+1d) | 1d? → 1d | 0% → 100% | resources none → Okabe; baseline start none → 2025-11-10; baseline finish none → 2025-11-10 |
| 40 | Testy manualne interfejsu (UI) | 2025-11-10 → 2025-11-11 A (+1d) | 2025-11-10 → 2025-11-12 A (+2d) | 1d? → 1.25d | 0% → 100% | resources none → Okabe; baseline start none → 2025-11-10; baseline finish none → 2025-11-10 |
| 41 | Testy integracyjne API (Auto) | 2025-11-10 → 2025-11-12 A (+2d) | 2025-11-10 → 2025-11-13 A (+3d) | 1d? → 1.25d | 0% → 100% | resources none → Okabe; baseline start none → 2025-11-10; baseline finish none → 2025-11-10 |
| 42 | **Optymalizacja wydajności** |  |  |  | 0% → 100% | baseline start none → 2025-11-10; baseline finish none → 2025-11-21 |
| 43 | Minifikacja kodu JS/CSS | 2025-11-10 → 2025-11-11 A (+1d) | 2025-11-10 → 2025-11-11 A (+1d) | 1d? → 1d | 0% → 100% | resources none → Lucjusz; baseline start none → 2025-11-10; baseline finish none → 2025-11-10 |
| 44 | Optymalizacja zapytań SQL | 2025-11-10 → 2025-11-11 A (+1d) | 2025-11-10 → 2025-11-11 A (+1d) | 1d? → 1d | 0% → 100% | resources none → Makise; baseline start none → 2025-11-10; baseline finish none → 2025-11-10 |
| 45 | Audyt wydajności (Lighthouse) | 2025-11-10 → 2025-11-12 A (+2d) | 2025-11-10 → 2025-11-12 A (+2d) | 1d? → 1d | 0% → 100% | resources none → Lucjusz; baseline start none → 2025-11-10; baseline finish none → 2025-11-10 |
| 46 | **Demo i dokumentacja końcowa** |  |  |  | 0% → 100% | baseline start none → 2025-11-10; baseline finish none → 2025-11-21 |
| 47 | Przygotowanie prezentacji Demo | 2025-11-10 → 2025-11-11 A (+1d) | 2025-11-10 → 2025-11-11 A (+1d) | 1d? → 1d | 0% → 100% | resources none → Makise; baseline start none → 2025-11-10; baseline finish none → 2025-11-10 |
| 48 | Kompletowanie dok. technicznej | 2025-11-10 → 2025-11-12 A (+2d) | 2025-11-10 → 2025-11-12 A (+2d) | 1d? → 1d | 0% → 100% | resources none → Makise; baseline start none → 2025-11-10; baseline finish none → 2025-11-10 |

## Version 3 (saved 2026-01-19)

Note of the change: Zmienione godziny + zmiana wykresu spalania

Last finish stays 2025-11-21.

Changed:

| ID | Task | Start | Finish | Duration | Other |
| --- | --- | --- | --- | --- | --- |
| 1 | **Sprint 1** |  |  | 2w → 10d |  |
| 3 | Analiza wymagań biznesowych |  | 2025-10-01 A → 2025-10-02 A (+1d) | 1.12d → 2.5d | baseline start 2025-09-29 → 2025-09-30; baseline finish 2025-09-29 → 2025-10-03 |
| 4 | Spisanie dokumentacji projektu | 2025-10-01 A → 2025-10-02 A (+1d) | 2025-10-01 A → 2025-10-02 A (+1d) |  | baseline start 2025-09-29 → 2025-10-01; baseline finish 2025-09-29 → 2025-10-01 |
| 6 | Projekt makiety strony głównej |  | 2025-10-02 A → 2025-10-03 A (+1d) | 2.25d → 2d | baseline start 2025-09-29 → 2025-09-30; baseline finish 2025-09-29 → 2025-10-03 |
| 7 | Projekt formularzy |  | 2025-10-06 A → 2025-10-07 A (+1d) | 3.12d → 1.38d | baseline start 2025-09-29 → 2025-10-01; baseline finish 2025-09-29 → 2025-10-07 |
| 8 | Dobór stylów CSS i fontów |  |  | 2.25d → 0.53d | baseline start 2025-09-29 → 2025-10-02; baseline finish 2025-09-29 → 2025-10-06 |
| 10 | Utworzenie tabeli 'Users' w DB |  |  | 2.12d → 0.5d | baseline start 2025-09-29 → 2025-10-01; baseline finish 2025-09-29 → 2025-10-03 |
| 11 | API Backend: Logowanie |  | 2025-10-08 A → 2025-10-09 A (+1d) | 2.12d → 1.5d | baseline start 2025-09-29 → 2025-10-03; baseline finish 2025-09-29 → 2025-10-09 |
| 12 | Frontend: Formularz HTML/JS |  |  | 2.12d → 1d | baseline start 2025-09-29 → 2025-10-06; baseline finish 2025-09-29 → 2025-10-10 |
| 15 | Backend: Endpoint GET /products |  | 2025-10-16 A → 2025-10-15 A (-1d) | 2.12d → 1.5d | baseline start 2025-10-13 → 2025-10-14; baseline finish 2025-10-13 → 2025-10-15 |
| 16 | Frontend: Widok listy (HTML/CSS) |  | 2025-10-16 A → 2025-10-17 A (+1d) | 2.12d → 1.25d | baseline start 2025-10-13 → 2025-10-14; baseline finish 2025-10-13 → 2025-10-17 |
| 17 | Frontend: Pobieranie danych (JS) |  | 2025-10-17 A → 2025-10-20 A (+3d) | 1.12d → 1.45d | baseline start 2025-10-13 → 2025-10-16; baseline finish 2025-10-13 → 2025-10-20 |
| 19 | Backend: Zapytania SQL (WHERE) | 2025-10-14 A → 2025-10-17 A (+3d) | 2025-10-15 A → 2025-10-20 A (+5d) | 1.12d → 1.6d | baseline start 2025-10-13 → 2025-10-14; baseline finish 2025-10-13 → 2025-10-16 |
| 20 | Frontend: Pasek boczny filtrów |  | 2025-10-15 A → 2025-10-16 A (+1d) |  | baseline start 2025-10-13 → 2025-10-14; baseline finish 2025-10-13 → 2025-10-16 |
| 22 | Backend: Sesja koszyka (Logic) |  | 2025-10-17 A → 2025-10-20 A (+3d) | 3.12d → 1.9d | baseline start 2025-10-13 → 2025-10-14; baseline finish 2025-10-13 → 2025-10-20 |
| 23 | Frontend: Przycisk Dodaj (JS) |  | 2025-10-21 A → 2025-10-17 A (-4d) | 2.12d → 0.5d | baseline start 2025-10-13 → 2025-10-17; baseline finish 2025-10-13 → 2025-10-17 |
| 24 | Frontend: Widok koszyka (Table) |  | 2025-10-22 A → 2025-10-23 A (+1d) |  | baseline start 2025-10-13 → 2025-10-21; baseline finish 2025-10-13 → 2025-10-23 |
| 27 | Backend: API zapisu zamówienia |  |  | 3.12d → 1d | baseline start 2025-10-27 → 2025-10-28; baseline finish 2025-10-27 → 2025-10-31 |
| 28 | Frontend: Formularz dostawy |  | 2025-10-30 A → 2025-10-31 A (+1d) | 2.12d → 1.05d | baseline start 2025-10-27 → 2025-10-28; baseline finish 2025-10-27 → 2025-10-31 |
| 29 | DB: Tabela Orders i relacje |  |  | 2.12d → 0.75d | baseline start 2025-10-27 → 2025-10-28; baseline finish 2025-10-27 → 2025-10-30 |
| 31 | Integracja API (klucze, connect) |  | 2025-10-31 A → 2025-11-03 A (+3d) | 3.12d → 2d | baseline start 2025-10-27 → 2025-10-28; baseline finish 2025-10-27 → 2025-11-03 |
| 32 | Obsługa statusów płatności (UI) |  |  | 3.12d → 1d | baseline start 2025-10-27 → 2025-10-28; baseline finish 2025-10-27 → 2025-10-31 |
| 34 | Layout panelu i Dashboard |  | 2025-11-04 A → 2025-11-05 A (+1d) | 4.12d → 1.8d | baseline start 2025-10-27 → 2025-10-28; baseline finish 2025-10-27 → 2025-11-05 |
| 35 | Backend: Edycja produktów |  | 2025-11-04 A → 2025-11-03 A (-1d) | 4.25d → 1.5d | baseline start 2025-10-27 → 2025-10-28; baseline finish 2025-10-27 → 2025-11-03 |
| 36 | Frontend: Lista zamówień (View) |  | 2025-11-04 A → 2025-11-05 A (+1d) | 3.12d → 1.5d | baseline start 2025-10-27 → 2025-10-28; baseline finish 2025-10-27 → 2025-11-05 |
| 39 | Scenariusze testowe (Docs) |  |  |  | baseline start 2025-11-10 → 2025-11-11; baseline finish 2025-11-10 → 2025-11-11 |
| 40 | Testy manualne interfejsu (UI) |  | 2025-11-12 A → 2025-11-17 A (+5d) | 1.25d → 3.25d | baseline start 2025-11-10 → 2025-11-11; baseline finish 2025-11-10 → 2025-11-17 |
| 41 | Testy integracyjne API (Auto) |  | 2025-11-13 A → 2025-11-17 A (+4d) | 1.25d → 2.25d | baseline start 2025-11-10 → 2025-11-12; baseline finish 2025-11-10 → 2025-11-17 |
| 43 | Minifikacja kodu JS/CSS |  |  |  | baseline start 2025-11-10 → 2025-11-11; baseline finish 2025-11-10 → 2025-11-11 |
| 44 | Optymalizacja zapytań SQL |  |  |  | baseline start 2025-11-10 → 2025-11-11; baseline finish 2025-11-10 → 2025-11-11 |
| 45 | Audyt wydajności (Lighthouse) |  |  | 1d → 0.8d | baseline start 2025-11-10 → 2025-11-12; baseline finish 2025-11-10 → 2025-11-12 |
| 47 | Przygotowanie prezentacji Demo |  |  | 1d → 0.5d | baseline start 2025-11-10 → 2025-11-11; baseline finish 2025-11-10 → 2025-11-11 |
| 48 | Kompletowanie dok. technicznej |  | 2025-11-12 A → 2025-11-13 A (+1d) | 1d → 1.7d | baseline start 2025-11-10 → 2025-11-12; baseline finish 2025-11-10 → 2025-11-13 |

## Version 4 (saved 2026-01-29)

Note of the change: Punkt 5 z Projektu

Last finish stays 2025-11-21.

Changed:

| ID | Task | Predecessors |
| --- | --- | --- |
| 4 | Spisanie dokumentacji projektu | none → 3FS-1d |
| 5 | **Projekt interfejsu (UI)** | none → 2SS |
| 7 | Projekt formularzy | none → 6FS-2d |
| 8 | Dobór stylów CSS i fontów | none → 7FS-5d |
| 9 | **Rejestracja i logowanie** | none → 2SS |
| 11 | API Backend: Logowanie | none → 10FS-2d |
| 12 | Frontend: Formularz HTML/JS | none → 11FS-3d |
| 14 | **Katalog produktów (Backend + Lista)** | none → 12 |
| 16 | Frontend: Widok listy (HTML/CSS) | none → 15SS |
| 17 | Frontend: Pobieranie danych (JS) | none → 16FS-1d |
| 18 | **Filtrowanie produktów** | none → 14SS |
| 20 | Backend: Zapytania SQL (WHERE) | none → 19FS+1d |
| 21 | **Koszyk zakupowy** | none → 14SS |
| 23 | Frontend: Przycisk Dodaj (JS) | none → 22FS-3d |
| 24 | Frontend: Widok koszyka (Table) | none → 23FS+4d |
| 26 | **Proces składania zamówienia** | none → 24 |
| 28 | Frontend: Formularz dostawy | none → 27SS |
| 29 | DB: Tabela Orders i relacje | none → 27SS |
| 30 | **Bramka płatności (Integracja)** | none → 26SS |
| 32 | Obsługa statusów płatności (UI) | none → 31SS |
| 33 | **Panel administracyjny** | none → 26SS |
| 35 | Backend: Edycja produktów | none → 34SS |
| 36 | Frontend: Lista zamówień (View) | none → 34SS |
| 38 | **Testy funkcjonalne i integracyjne** | none → 36 |
| 40 | Testy manualne interfejsu (UI) | none → 39SS |
| 41 | Testy integracyjne API (Auto) | none → 40FS-5d |
| 42 | **Optymalizacja wydajności** | none → 38SS |
| 44 | Optymalizacja zapytań SQL | none → 43SS |
| 45 | Audyt wydajności (Lighthouse) | none → 44FS+1d |
| 46 | **Demo i dokumentacja końcowa** | none → 38SS |
| 48 | Kompletowanie dok. technicznej | none → 47FS+1d |
